# VACE-Controlling

How a schedule from MS Project changed from version to version. A marks actual dates.

## Version 1 (saved 2006-12-18)

Note of the change: Projektplan geändert

| ID | WBS | Task | Duration | Start | Finish | Predecessors | Total float | Constraint |
| --- | --- | --- | --- | --- | --- | --- | --- | --- |
| 1 |  | Projekt genehmigt | 0d | 2006-10-16 | 2006-10-16 |  | 232d | start no earlier than 2006-10-16 |
| 2 |  | Projektvorschlag erstellen | 6d? | 2006-10-16 | 2006-10-23 | 1 | 232d | finish no earlier than 2006-10-23 |
| 3 |  | Projekt beauftragt | 0d | 2006-10-23 | 2006-10-23 | 2 | 232d | start no earlier than 2006-10-16 |
| 4 |  | Projekthandbuch erstellen | 6d | 2006-10-30 | 2006-11-06 | 3 | 228d | start no earlier than 2006-10-30 |
| 5 |  | Start | 0d | 2006-11-06 | 2006-11-06 | 4 | 228d | start no earlier than 2006-10-30 |
| 6 |  | Pflichtenheft erstellen | 14d | 2006-11-08 | 2006-11-27 | 5 | 227d | finish no earlier than 2006-11-27 |
| 7 |  | Altsystemanalyse erstellen | 15d | 2006-11-28 | 2006-12-18 | 6 | 227d | finish no earlier than 2006-12-18 |
| 8 |  | Systemspezifikation erstellen | 20d | 2006-12-19 | 2007-01-15 | 7 | 227d | finish no earlier than 2006-12-25 |
| 9 |  | SW-Spezifikation erstellen | 20d | 2007-01-16 | 2007-02-12 | 8 | 227d | finish no earlier than 2007-01-22 |
| 10 |  | System spezifiziert | 0d | 2007-02-12 | 2007-02-12 | 9 | 227d | start no earlier than 2007-01-22 |
| 11 |  | Systemarchitektur erstellen | 20d | 2007-02-13 | 2007-03-12 | 10 | 227d |  |
| 12 |  | SW-Architektur erstellen | 20d | 2007-03-13 | 2007-04-09 | 11 | 227d |  |
| 13 |  | Datenbankentwurf erstellen | 10d | 2007-04-10 | 2007-04-23 | 12 | 227d | finish no earlier than 2007-02-12 |
| 14 |  | Implementierungs-, Integrations und Prüfkonzept erstellen | 20d | 2007-04-24 | 2007-05-21 | 13 | 227d | finish no earlier than 2007-03-05 |
| 15 |  | System entworfen | 0d | 2007-05-21 | 2007-05-21 | 14 | 227d | start no earlier than 2007-05-21 |
| 16 |  | Prototyp entwerfen | 25d | 2007-05-22 | 2007-06-25 | 15 | 227d | finish no earlier than 2007-06-20 |
| 17 |  | Start der Implementierung | 0d | 2007-09-17 | 2007-09-17 |  | 3d | start no earlier than 2007-09-17 |
| 18 |  | Datenbank aufsetzen/konfigurieren | 15d | 2007-09-17 | 2007-10-05 | 17 | 3d | finish no earlier than 2007-10-01 |
| 19 | 19 | **Entwerfen der Eingabeformulare/Masken** | 40d | 2007-10-08 | 2007-11-30 | 18 | 3d |  |
| 20 |  | Eingabe der Mitarbeiterdaten | 5d | 2007-10-08 | 2007-10-12 |  | 3d |  |
| 21 |  | Eingabe der Projektdaten | 5d | 2007-10-15 | 2007-10-19 | 20 | 3d |  |
| 22 |  | Eingabe der Fremdleistungen | 5d | 2007-10-22 | 2007-10-26 | 21 | 3d |  |
| 23 |  | Einlesen der Konditionen für Mitarbeiter | 5d | 2007-10-29 | 2007-11-02 | 22 | 3d |  |
| 24 |  | Eingabe der eingegangenen Zahlungen | 5d | 2007-11-05 | 2007-11-09 | 23 | 3d |  |
| 25 |  | Eingabe der produktiven Stunden | 5d | 2007-11-12 | 2007-11-16 | 24 | 3d |  |
| 26 |  | Eingabe der unproduktiven Stunden | 5d | 2007-11-19 | 2007-11-23 | 25 | 3d |  |
| 27 |  | Stundenkontrolle | 5d | 2007-11-26 | 2007-11-30 | 26 | 3d |  |
| 28 |  | Generieren der Zeiterfassungs-Excel Sheets | 20d | 2007-12-03 | 2007-12-28 | 19 | 3d |  |
| 29 |  | Generieren von Berichten | 25d | 2007-12-31 | 2008-02-01 | 28 | 3d |  |
| 30 |  | Zusammenfügen aller Funktionen | 30d | 2008-02-04 | 2008-03-14 | 29 | 3d |  |
| 31 |  | Testen | 15d | 2008-03-17 | 2008-04-04 | 30 | 3d |  |
| 32 |  | Systemende realisiert | 0d | 2008-04-04 | 2008-04-04 | 31 | 3d | start no earlier than 2007-03-26 |
| 33 |  | System in den Betrieb einführen | 10d | 2008-04-07 | 2008-04-18 | 32 | 3d |  |
| 34 |  | Testbetrieb | 5d | 2008-04-21 | 2008-04-25 | 33 | 3d |  |
| 35 |  | System integriert | 0d | 2008-05-01 | 2008-05-01 | 34 | 0d | start no earlier than 2008-05-01 |
| 36 |  | Lieferung durchführen | 5d | 2008-05-01 | 2008-05-07 | 35 | 0d |  |
| 37 |  | Lieferung durchgeführt | 0d | 2008-05-07 | 2008-05-07 | 36 | 0d | start no earlier than 2008-05-01 |
| 38 |  | Abnahme erfolgt | 0d | 2008-05-08 | 2008-05-08 | 37 | 0d | start no earlier than 2008-05-08 |
| 39 |  | Projektende | 0d | 2008-05-08 | 2008-05-08 | 38 | 0d | start no earlier than 2008-05-08 |

## Version 2 (saved 2006-12-18)

Last finish 2008-05-08 → 2008-05-09 (+1d).

Added:

| ID | Task | Duration | Start | Finish | Predecessors | Constraint |
| --- | --- | --- | --- | --- | --- | --- |
| 17 | Prototyp entworfen | 0d | 2007-06-04 | 2007-06-04 |  | start no earlier than 2007-06-04 |
| 18 | Präsentation | 6d | 2007-06-04 | 2007-06-11 | 17 |  |
| 37 | Dokumentation erstellen | 5d | 2008-04-28 | 2008-05-02 | 36 |  |

Changed:

| ID | Task | Start | Finish | Duration | Total float | Predecessors | Other |
| --- | --- | --- | --- | --- | --- | --- | --- |
| 2 | Projektvorschlag erstellen |  |  | 6d? → 6d | 232d → 249d |  |  |
| 16 | Prototyp entwerfen |  | 2007-06-25 → 2007-06-04 (-21d) | 25d → 10d | 227d → 244d |  | constraint finish no earlier than 2007-06-20 → finish no earlier than 2007-06-04 |
| 38 | System integriert | 2008-05-01 → 2008-05-02 (+1d) | 2008-05-01 → 2008-05-02 (+1d) |  |  | 36 → 37 |  |
| 39 | Lieferung durchführen | 2008-05-01 → 2008-05-05 (+4d) | 2008-05-07 → 2008-05-09 (+2d) |  |  |  |  |
| 40 | Lieferung durchgeführt | 2008-05-07 → 2008-05-09 (+2d) | 2008-05-07 → 2008-05-09 (+2d) |  |  |  |  |
| 41 | Abnahme erfolgt | 2008-05-08 → 2008-05-09 (+1d) | 2008-05-08 → 2008-05-09 (+1d) |  |  |  |  |
| 42 | Projektende | 2008-05-08 → 2008-05-09 (+1d) | 2008-05-08 → 2008-05-09 (+1d) |  |  |  |  |
